# Freelancing Tourism Guidance

Schedule from MS Project, 2021-12-01 to 2022-07-07, status date 2022-01-01, costs in $, A marks actual dates.

## Calendars

- Standard: Mon-Fri 08:00-12:00, 13:00-17:00; Sat-Sun off.

## Resources

| Resource | Rate | Cost per use |
| --- | --- | --- |
| project manager | 62.5 |  |
| senior android developer2 | 43.75 |  |
| android developer team leader | 62.5 |  |
| senior android developer | 43.75 |  |
| jeniour android developer | 31.25 |  |
| UI UX designer team leader | 50 |  |
| senior UI UX designer | 40.62 |  |
| senior UI UX designer2 | 40.62 |  |
| senior back end developer | 31.25 |  |
| jeniour back end developer | 31.25 |  |
| graphic designer | 12.5 |  |
| graphic designer2 | 12.5 |  |
| quality analysis expert | 43.75 |  |
| marketer | 25 |  |
| influencer | 12.5 |  |
| content creator | 12.5 |  |
| blogger | 12.5 |  |
| API's points | 0.19 |  |
| server |  | 50 |
| digital ads on social media platforms | 3.12 |  |
| software tester | 25 |  |
| software tester2 | 25 |  |
| user |  |  |
| jeniour UI UX designer | 31.25 |  |
| jeniour UI UX designer2 | 31.25 |  |
| HR | 31.25 |  |
| HR2 | 31.25 |  |
| jeniour android developer2 | 31.25 |  |
| bussins analyst | 25 |  |
| bussins analyst2 | 25 |  |
| bussins analyst3 | 25 |  |
| quality analysis expert2 |  |  |
| full stack | 62.5 |  |

## Schedule

| ID | WBS | Task | Type | Duration | Start | Finish | Predecessors | Complete | Remaining | Baseline start | Baseline finish | Baseline duration | Baseline 1 start | Baseline 1 finish | Total slack | Deadline | Resources | Work | Actual work | Cost | Baseline cost | Actual cost |
| --- | --- | --- | --- | --- | --- | --- | --- | --- | --- | --- | --- | --- | --- | --- | --- | --- | --- | --- | --- | --- | --- | --- |
| 1 | 1 | **Freelancing Tourism Guidance** |  | 157d | 2021-12-01 A | 2022-07-07 |  | 13% | 136.57d | 2021-12-01 | 2022-07-07 | 157d | 2021-12-01 | 2022-07-07 | 0d |  |  | 4992h | 504h | 169,500 | 169,500 | 19,800 |
| 2 | 1.1 | The app beginning | milestone | 0d | 2021-12-01 A | 2021-12-01 A |  | 100% |  | 2021-12-01 | 2021-12-01 | 0d | 2021-12-01 | 2021-12-01 |  |  |  |  |  |  |  |  |
| 3 | 1.2 | **analysis** |  | 9d | 2021-12-01 A | 2021-12-13 A |  | 100% |  | 2021-12-01 | 2021-12-13 | 9d | 2021-12-01 | 2021-12-13 |  | 2022-01-15 |  | 184h | 184h | 6,650 | 6,650 | 6,650 |
| 4 | 1.2.1 | identify the app users |  | 2d | 2021-12-01 A | 2021-12-02 A |  | 100% |  | 2021-12-01 | 2021-12-02 | 2d | 2021-12-01 | 2021-12-02 |  |  | project manager | 16h | 16h | 1,000 | 1,000 | 1,000 |
| 5 | 1.2.2 | **study the competitors** |  | 9d | 2021-12-01 A | 2021-12-13 A | 4SS | 100% |  | 2021-12-01 | 2021-12-13 | 9d | 2021-12-01 | 2021-12-13 |  |  |  | 136h | 136h | 4,850 | 4,850 | 4,850 |
| 6 | 1.2.2.1 | create a spreadsheet with a list of your competitors |  | 3d | 2021-12-01 A | 2021-12-03 A |  | 100% |  | 2021-12-01 | 2021-12-03 | 3d | 2021-12-01 | 2021-12-03 |  |  | HR | 24h | 24h | 750 | 750 | 750 |
| 7 | 1.2.2.2 | research each company |  | 3d | 2021-12-06 A | 2021-12-08 A | 6 | 100% |  | 2021-12-06 | 2021-12-08 | 3d | 2021-12-06 | 2021-12-08 |  |  | bussins analyst; bussins analyst2 | 48h | 48h | 1,200 | 1,200 | 1,200 |
| 8 | 1.2.2.3 | specify all the features to add it in the app |  | 2d | 2021-12-09 A | 2021-12-10 A | 7 | 100% |  | 2021-12-09 | 2021-12-10 | 2d | 2021-12-09 | 2021-12-10 |  |  | android developer team leader; bussins analyst; UI UX designer team leader | 48h | 48h | 2,200 | 2,200 | 2,200 |
| 9 | 1.2.2.4 | summarize findings in a report |  | 1d | 2021-12-13 A | 2021-12-13 A | 8 | 100% |  | 2021-12-13 | 2021-12-13 | 1d | 2021-12-13 | 2021-12-13 |  |  | bussins analyst; project manager | 16h | 16h | 700 | 700 | 700 |
| 10 | 1.2.3 | make research to find the suitable place to initially lunch the app |  | 4d | 2021-12-01 A | 2021-12-06 A | 4SS | 100% |  | 2021-12-01 | 2021-12-06 | 4d | 2021-12-01 | 2021-12-06 |  |  | bussins analyst3 | 32h | 32h | 800 | 800 | 800 |
| 11 | 1.3 | The end of analysis and UI UX beginning | milestone | 0d | 2021-12-13 A | 2021-12-13 A | 3 | 100% |  | 2021-12-13 | 2021-12-13 | 0d | 2021-12-13 | 2021-12-13 |  |  |  |  |  |  |  |  |
| 12 | 1.4 | **UI UX design** |  | 45d | 2021-12-14 A | 2022-02-14 | 3 | 39% | 27.35d | 2021-12-14 | 2022-02-14 | 45d | 2021-12-14 | 2022-02-14 | 0d | 2022-03-01 |  | 1248h | 320h | 49,200 | 49,200 | 13,150 |
| 13 | 1.4.1 | understand the app functionality |  | 2d | 2021-12-14 A | 2021-12-15 A |  | 100% |  | 2021-12-14 | 2021-12-15 | 2d | 2021-12-14 | 2021-12-15 |  |  | UI UX designer team leader; senior UI UX designer | 32h | 32h | 1,450 | 1,450 | 1,450 |
| 14 | 1.4.2 | **Understand the users** |  | 7d | 2021-12-16 A | 2021-12-24 A | 13 | 100% |  | 2021-12-16 | 2021-12-24 | 7d | 2021-12-16 | 2021-12-24 |  |  |  | 208h | 208h | 8,375 | 8,375 | 8,375 |
| 15 | 1.4.2.1 | **make a researches** |  | 7d | 2021-12-16 A | 2021-12-24 A |  | 100% |  | 2021-12-16 | 2021-12-24 | 7d | 2021-12-16 | 2021-12-24 |  |  |  | 208h | 208h | 8,375 | 8,375 | 8,375 |
| 16 | 1.4.2.1.1 | interviews |  | 4d | 2021-12-16 A | 2021-12-21 A |  | 100% |  | 2021-12-16 | 2021-12-21 | 4d | 2021-12-16 | 2021-12-21 |  |  | HR; senior UI UX designer | 64h | 64h | 2,300 | 2,300 | 2,300 |
| 17 | 1.4.2.1.2 | surveys |  | 2d | 2021-12-16 A | 2021-12-17 A | 16SS | 100% |  | 2021-12-16 | 2021-12-17 | 2d | 2021-12-16 | 2021-12-17 |  |  | jeniour UI UX designer; jeniour UI UX designer2 | 32h | 32h | 1,000 | 1,000 | 1,000 |
| 18 | 1.4.2.1.3 | usability studies |  | 7d | 2021-12-16 A | 2021-12-24 A | 16SS | 100% |  | 2021-12-16 | 2021-12-24 | 7d | 2021-12-16 | 2021-12-24 |  |  | senior UI UX designer2; UI UX designer team leader | 112h | 112h | 5,075 | 5,075 | 5,075 |
| 19 | 1.4.3 | Define the user problems |  | 3d | 2021-12-27 A | 2021-12-29 A | 14 | 100% |  | 2021-12-27 | 2021-12-29 | 3d | 2021-12-27 | 2021-12-29 |  |  | UI UX designer team leader; senior UI UX designer | 48h | 48h | 2,175 | 2,175 | 2,175 |
| 20 | 1.4.4 | **Ideate** |  | 4d | 2021-12-30 A | 2022-01-04 | 19 | 50% | 2d | 2021-12-30 | 2022-01-04 | 4d | 2021-12-30 | 2022-01-04 | 0d |  |  | 48h | 32h | 1,800 | 1,800 | 1,150 |
| 21 | 1.4.4.1 | analyze the findings from the analyses process |  | 2d | 2021-12-30 A | 2021-12-31 A |  | 100% |  | 2021-12-30 | 2021-12-31 | 2d | 2021-12-30 | 2021-12-31 |  |  | jeniour UI UX designer; senior UI UX designer | 32h | 32h | 1,150 | 1,150 | 1,150 |
| 22 | 1.4.4.2 | outline the goals |  | 2d | 2022-01-03 | 2022-01-04 | 21 |  |  | 2022-01-03 | 2022-01-04 | 2d | 2022-01-03 | 2022-01-04 | 0d |  | senior UI UX designer2 | 16h |  | 650 | 650 |  |
| 23 | 1.4.5 | **wireframing and prototype** |  | 22d | 2022-01-05 | 2022-02-03 | 20 |  |  | 2022-01-05 | 2022-02-03 | 22d | 2022-01-05 | 2022-02-03 | 0d |  |  | 768h |  | 29,550 | 29,550 |  |
| 24 | 1.4.5.1 | draw the wireframe of the app from the scratch |  | 7d | 2022-01-05 | 2022-01-13 |  |  |  | 2022-01-05 | 2022-01-13 | 7d | 2022-01-05 | 2022-01-13 | 0d |  | senior UI UX designer; senior UI UX designer2; jeniour android developer2 | 168h |  | 6,300 | 6,300 |  |
| 25 | 1.4.5.2 | make a high-fidelity prototype on any digital software (Adobe XD) |  | 15d | 2022-01-14 | 2022-02-03 | 24 |  |  | 2022-01-14 | 2022-02-03 | 15d | 2022-01-14 | 2022-02-03 | 0d |  | jeniour UI UX designer2; senior UI UX designer; senior UI UX designer2; jeniour UI UX designer; UI UX designer team leader | 600h |  | 23,250 | 23,250 |  |

| ID | WBS | Task | Type | Duration | Start | Finish | Predecessors | Baseline start | Baseline finish | Baseline duration | Baseline 1 start | Baseline 1 finish | Total slack | Free slack | Deadline | Resources | Work | Cost | Baseline cost |
| --- | --- | --- | --- | --- | --- | --- | --- | --- | --- | --- | --- | --- | --- | --- | --- | --- | --- | --- | --- |
| 26 | 1.4.6 | **Testing** |  | 7d | 2022-02-04 | 2022-02-14 | 23 | 2022-02-04 | 2022-02-14 | 7d | 2022-02-04 | 2022-02-14 | 0d |  |  |  | 144h | 5,850 | 5,850 |
| 27 | 1.4.6.1 | test the responsive prototype with users |  | 4d | 2022-02-04 | 2022-02-09 |  | 2022-02-04 | 2022-02-09 | 4d | 2022-02-04 | 2022-02-09 | 0d |  |  | UI UX designer team leader; jeniour UI UX designer; senior UI UX designer | 96h | 3,900 | 3,900 |
| 28 | 1.4.6.2 | test the usability studies |  | 2d | 2022-02-10 | 2022-02-11 | 27 | 2022-02-10 | 2022-02-11 | 2d | 2022-02-10 | 2022-02-11 | 0d |  |  | senior UI UX designer; UI UX designer team leader | 32h | 1,450 | 1,450 |
| 29 | 1.4.6.3 | make a report of issues faced |  | 1d | 2022-02-14 | 2022-02-14 | 28 | 2022-02-14 | 2022-02-14 | 1d | 2022-02-14 | 2022-02-14 | 0d |  |  | jeniour UI UX designer; jeniour UI UX designer2 | 16h | 500 | 500 |
| 30 | 1.5 | The end of UI UX and implementation beginning | milestone | 0d | 2022-02-14 | 2022-02-14 | 12 | 2022-02-14 | 2022-02-14 | 0d | 2022-02-14 | 2022-02-14 | 103d |  |  |  |  |  |  |
| 31 | 1.6 | **implementation** |  | 43d | 2022-02-15 | 2022-04-14 | 12 | 2022-02-15 | 2022-04-14 | 43d | 2022-02-15 | 2022-04-14 | 0d |  | 2022-05-01 |  | 1744h | 65,900 | 65,900 |
| 32 | 1.6.1 | **delivery setup** |  | 20d | 2022-02-15 | 2022-03-14 |  | 2022-02-15 | 2022-03-14 | 20d | 2022-02-15 | 2022-03-14 | 23d |  |  |  | 208h | 6,050 | 6,050 |
| 33 | 1.6.1.1 | launch a hiring ad |  | 14d | 2022-02-15 | 2022-03-04 |  | 2022-02-15 | 2022-03-04 | 14d | 2022-02-15 | 2022-03-04 | 23d | 0d |  | marketer | 112h | 2,800 | 2,800 |
| 34 | 1.6.1.2 | do interviews |  | 5d | 2022-03-07 | 2022-03-11 | 33 | 2022-03-07 | 2022-03-11 | 5d | 2022-03-07 | 2022-03-11 | 23d | 0d |  | HR; HR2 | 80h | 2,500 | 2,500 |
| 35 | 1.6.1.3 | hire drivers |  | 1d | 2022-03-14 | 2022-03-14 | 34 | 2022-03-14 | 2022-03-14 | 1d | 2022-03-14 | 2022-03-14 | 23d |  |  | HR; project manager | 16h | 750 | 750 |
| 36 | 1.6.2 | **resturant setup** |  | 10d | 2022-02-15 | 2022-02-28 |  | 2022-02-15 | 2022-02-28 | 10d | 2022-02-15 | 2022-02-28 | 33d |  |  |  | 80h | 5,000 | 5,000 |
| 37 | 1.6.2.1 | specify the resturants and contract with them |  | 10d | 2022-02-15 | 2022-02-28 |  | 2022-02-15 | 2022-02-28 | 10d | 2022-02-15 | 2022-02-28 | 33d |  |  | project manager | 80h | 5,000 | 5,000 |
| 38 | 1.6.3 | **back end** |  | 36d | 2022-02-15 | 2022-04-05 |  | 2022-02-15 | 2022-04-05 | 36d | 2022-02-15 | 2022-04-05 | 0d |  |  |  | 1112h | 41,300 | 41,300 |
| 39 | 1.6.3.1 | choose the implementation way (cross platforms - native) |  | 1d | 2022-02-15 | 2022-02-15 |  | 2022-02-15 | 2022-02-15 | 1d | 2022-02-15 | 2022-02-15 | 22d | 0d |  | android developer team leader | 8h | 500 | 500 |
| 40 | 1.6.3.2 | divide the implementation to 3 parts (customer part – delivery part – restaurant part) |  | 7d | 2022-02-16 | 2022-02-24 | 39 | 2022-02-16 | 2022-02-24 | 7d | 2022-02-16 | 2022-02-24 | 22d | 0d |  | android developer team leader | 56h | 3,500 | 3,500 |
| 41 | 1.6.3.3 | define each part functionality and requirements |  | 4d | 2022-02-25 | 2022-03-02 | 40 | 2022-02-25 | 2022-03-02 | 4d | 2022-02-25 | 2022-03-02 | 22d | 0d |  | jeniour android developer; jeniour android developer2 | 64h | 2,000 | 2,000 |
| 42 | 1.6.3.4 | prepare a server to link the app with |  | 1d | 2022-02-15 | 2022-02-15 |  | 2022-02-15 | 2022-02-15 | 1d | 2022-02-15 | 2022-02-15 | 0d |  |  | jeniour android developer; server | 8h | 300 | 300 |
| 43 | 1.6.3.5 | prepare the database for the 3 parts |  | 15d | 2022-02-16 | 2022-03-08 | 42 | 2022-02-16 | 2022-03-08 | 15d | 2022-02-16 | 2022-03-08 | 0d |  |  | senior back end developer | 120h | 3,750 | 3,750 |
| 44 | 1.6.3.6 | prepare the required APIs |  | 5d | 2022-03-09 | 2022-03-15 | 43 | 2022-03-09 | 2022-03-15 | 5d | 2022-03-09 | 2022-03-15 | 15d |  |  | jeniour back end developer | 40h | 1,250 | 1,250 |
| 45 | 1.6.3.7 | choose the suitable design pattern |  | 2d | 2022-03-03 | 2022-03-04 | 41 | 2022-03-03 | 2022-03-04 | 2d | 2022-03-03 | 2022-03-04 | 22d |  |  | android developer team leader | 16h | 1,000 | 1,000 |
| 46 | 1.6.3.8 | start coding on the three parts of the app |  | 20d | 2022-03-09 | 2022-04-05 | 43 | 2022-03-09 | 2022-04-05 | 20d | 2022-03-09 | 2022-04-05 | 0d |  |  | jeniour android developer; jeniour android developer2; senior android developer; senior android developer2; senior back end developer | 800h | 29,000 | 29,000 |
| 47 | 1.6.4 | **frontend** |  | 43d | 2022-02-15 | 2022-04-14 | 38SS | 2022-02-15 | 2022-04-14 | 43d | 2022-02-15 | 2022-04-14 | 0d |  |  |  | 344h | 13,550 | 13,550 |
| 48 | 1.6.4.1 | received the wireframe and prototype from the UI UX team |  | 1d | 2022-02-15 | 2022-02-15 |  | 2022-02-15 | 2022-02-15 | 1d | 2022-02-15 | 2022-02-15 | 28d | 0d |  | jeniour android developer2 | 8h | 250 | 250 |
| 49 | 1.6.4.2 | start the design process |  | 14d | 2022-02-16 | 2022-03-07 | 48 | 2022-02-16 | 2022-03-07 | 14d | 2022-02-16 | 2022-03-07 | 28d |  |  | senior android developer; senior android developer2 | 224h | 9,800 | 9,800 |
| 50 | 1.6.4.3 | integrate the design with the backend functionality |  | 7d | 2022-04-06 | 2022-04-14 | 38 | 2022-04-06 | 2022-04-14 | 7d | 2022-04-06 | 2022-04-14 | 0d |  |  | jeniour back end developer; senior back end developer | 112h | 3,500 | 3,500 |
| 51 | 1.7 | The end of implementation and testing beginning | milestone | 0d | 2022-04-14 | 2022-04-14 | 31 | 2022-04-14 | 2022-04-14 | 0d | 2022-04-14 | 2022-04-14 | 60d |  |  |  |  |  |  |

| ID | WBS | Task | Type | Duration | Start | Finish | Predecessors | Baseline start | Baseline finish | Baseline duration | Baseline 1 start | Baseline 1 finish | Total slack | Resources | Work | Cost | Baseline cost |
| --- | --- | --- | --- | --- | --- | --- | --- | --- | --- | --- | --- | --- | --- | --- | --- | --- | --- |
| 52 | 1.8 | **Testing** |  | 20d | 2022-04-15 | 2022-05-12 | 31 | 2022-04-15 | 2022-05-12 | 20d | 2022-04-15 | 2022-05-12 | 0d |  | 832h | 25,550 | 25,550 |
| 53 | 1.8.1 | launch a demo |  | 1d | 2022-04-15 | 2022-04-15 |  | 2022-04-15 | 2022-04-15 | 1d | 2022-04-15 | 2022-04-15 | 0d | android developer team leader; project manager | 16h | 1,000 | 1,000 |
| 54 | 1.8.2 | testing usability |  | 18d | 2022-04-18 | 2022-05-11 | 53 | 2022-04-18 | 2022-05-11 | 18d | 2022-04-18 | 2022-05-11 | 0d | quality analysis expert; senior android developer | 288h | 12,600 | 12,600 |
| 55 | 1.8.3 | feedback from users |  | 18d | 2022-04-18 | 2022-05-11 | 54SS | 2022-04-18 | 2022-05-11 | 18d | 2022-04-18 | 2022-05-11 | 0d | HR; quality analysis expert2 | 288h | 4,500 | 4,500 |
| 56 | 1.8.4 | testing functionality |  | 7d | 2022-04-15 | 2022-04-25 |  | 2022-04-15 | 2022-04-25 | 7d | 2022-04-15 | 2022-04-25 | 13d | senior android developer2; software tester | 112h | 3,850 | 3,850 |
| 57 | 1.8.5 | testing performance |  | 7d | 2022-04-15 | 2022-04-25 |  | 2022-04-15 | 2022-04-25 | 7d | 2022-04-15 | 2022-04-25 | 13d | jeniour android developer; software tester2 | 112h | 3,150 | 3,150 |
| 58 | 1.8.6 | make a report with results |  | 1d | 2022-05-12 | 2022-05-12 | 55 | 2022-05-12 | 2022-05-12 | 1d | 2022-05-12 | 2022-05-12 | 0d | HR; software tester | 16h | 450 | 450 |
| 59 | 1.9 | The end of testing and maintenances beginning | milestone | 0d | 2022-05-12 | 2022-05-12 | 52 | 2022-05-12 | 2022-05-12 | 0d | 2022-05-12 | 2022-05-12 | 40d |  |  |  |  |
| 60 | 1.10 | **Maintenances** |  | 7d | 2022-05-13 | 2022-05-23 | 52 | 2022-05-13 | 2022-05-23 | 7d | 2022-05-13 | 2022-05-23 | 0d |  | 168h | 8,400 | 8,400 |
| 61 | 1.10.1 | Receiving report and feedback and fix it |  | 7d | 2022-05-13 | 2022-05-23 |  | 2022-05-13 | 2022-05-23 | 7d | 2022-05-13 | 2022-05-23 | 0d | android developer team leader; senior android developer; senior android developer2 | 168h | 8,400 | 8,400 |
| 62 | 1.11 | The end of maintenances and launching beginning | milestone | 0d | 2022-05-23 | 2022-05-23 | 60 | 2022-05-23 | 2022-05-23 | 0d | 2022-05-23 | 2022-05-23 | 33d |  |  |  |  |
| 63 | 1.12 | **Launching** |  | 3d | 2022-05-24 | 2022-05-26 | 60 | 2022-05-24 | 2022-05-26 | 3d | 2022-05-24 | 2022-05-26 | 0d |  | 48h | 2,700 | 2,700 |
| 64 | 1.12.1 | choose an app store like google play |  | 2d | 2022-05-24 | 2022-05-25 |  | 2022-05-24 | 2022-05-25 | 2d | 2022-05-24 | 2022-05-25 | 0d | project manager; quality analysis expert | 32h | 1,700 | 1,700 |
| 65 | 1.12.2 | launch the app |  | 1d | 2022-05-26 | 2022-05-26 | 64 | 2022-05-26 | 2022-05-26 | 1d | 2022-05-26 | 2022-05-26 | 0d | project manager | 8h | 500 | 500 |
| 66 | 1.12.3 | launch a website for your app |  | 1d | 2022-05-24 | 2022-05-24 |  | 2022-05-24 | 2022-05-24 | 1d | 2022-05-24 | 2022-05-24 | 2d | full stack | 8h | 500 | 500 |
| 67 | 1.13 | The end of launching and marketing beginning | milestone | 0d | 2022-05-26 | 2022-05-26 | 63 | 2022-05-26 | 2022-05-26 | 0d | 2022-05-26 | 2022-05-26 | 30d |  |  |  |  |
| 68 | 1.14 | **Marketing** |  | 30d | 2022-05-27 | 2022-07-07 | 63 | 2022-05-27 | 2022-07-07 | 30d | 2022-05-27 | 2022-07-07 | 0d |  | 768h | 11,100 | 11,100 |
| 69 | 1.14.1 | Influencer marketing |  | 30d | 2022-05-27 | 2022-07-07 |  | 2022-05-27 | 2022-07-07 | 30d | 2022-05-27 | 2022-07-07 | 0d | blogger; content creator; influencer | 720h | 9,000 | 9,000 |
| 70 | 1.14.2 | launch a promoted ad on all social platforms |  | 3d | 2022-05-27 | 2022-05-31 |  | 2022-05-27 | 2022-05-31 | 3d | 2022-05-27 | 2022-05-31 | 27d | marketer; project manager | 48h | 2,100 | 2,100 |
